# wbs-barbooking

Schedule from MS Project, 2022-12-13 to 2023-05-17, costs in €.

## Calendars

- Standard: Mon-Fri 09:00-13:00, 14:00-18:00; Sat-Sun off.

## Resources

| Resource | Rate |
| --- | --- |
| Mirko Cerati | 16 |
| Gioia Bertin | 50 |
| Gabriela Badarau | 25 |
| Lorenzo Marcato | 16 |
| Lo |  |

## Schedule

| ID | WBS | Task | Duration | Start | Finish | Predecessors | Total slack | Free slack | Constraint | Resources | Work | Cost |
| --- | --- | --- | --- | --- | --- | --- | --- | --- | --- | --- | --- | --- |
| 1 | 1 | **Bar Booking** | 111.25d | 2022-12-13 | 2023-05-17 |  | 0d |  |  |  | 810h | 21,588 |
| 2 | 1.1 | **AVVIO** | 5d | 2022-12-13 | 2022-12-19 |  | 70.75d | 7d |  |  | 120h | 3,568 |
| 3 | 1.1.1 | **Documenti iniziali di progetto** | 5d | 2022-12-13 | 2022-12-19 |  | 70.75d | 7d |  |  | 120h | 3,568 |
| 4 | 1.1.1.1 | Studio fattibilità | 2d | 2022-12-13 | 2022-12-14 |  | 70.75d | 0d | start no earlier than 2022-12-13 | Gioia Bertin; Gabriela Badarau; Lorenzo Marcato; Mirko Cerati | 64h | 1,712 |
| 5 | 1.1.1.2 | Analisi contesto | 2d | 2022-12-15 | 2022-12-16 | 4 | 71.75d |  | start no earlier than 2022-12-13 | Mirko Cerati | 16h | 256 |
| 6 | 1.1.1.3 | Analisi dei rischi | 2d | 2022-12-15 | 2022-12-16 | 4 | 71.75d | 8d | start no earlier than 2022-12-13 | Gabriela Badarau | 16h | 400 |
| 7 | 1.1.1.4 | Project Charter | 3d | 2022-12-15 | 2022-12-19 | 4 | 70.75d | 7d | start no earlier than 2022-12-13 | Gioia Bertin | 24h | 1,200 |
| 8 | 1.2 | **PIANIFICAZIONE** | 6d | 2022-12-29 | 2023-01-05 | 2 | 63.75d |  |  |  | 96h | 3,056 |
| 9 | 1.2.1 | **Documenti iniziali di progetto** | 6d | 2022-12-29 | 2023-01-05 | 3 | 63.75d |  |  |  | 64h | 2,000 |
| 10 | 1.2.1.1 | WBS - WP | 1d | 2022-12-29 | 2022-12-29 | 7 | 64.75d | 1d | start no earlier than 2022-12-29 | Gioia Bertin | 8h | 400 |
| 11 | 1.2.1.2 | GANTT | 2d | 2022-12-29 | 2022-12-30 | 6 | 63.75d | 0d | start no earlier than 2022-12-29 | Gabriela Badarau | 16h | 400 |
| 12 | 1.2.1.3 | RAM | 1d | 2023-01-02 | 2023-01-02 | 10, 11 | 63.75d | 0d | start no earlier than 2022-12-29 | Gabriela Badarau; Gioia Bertin | 16h | 600 |
| 13 | 1.2.1.4 | Stime di costo (BCWS) | 3d | 2023-01-03 | 2023-01-05 | 12 | 63.75d | 18d | start no earlier than 2022-12-29 | Gabriela Badarau | 24h | 600 |
| 14 | 1.2.2 | Anilisi statistica tramite sondaggio | 2d | 2023-01-03 | 2023-01-04 | 12 | 64.75d | 19d | start no earlier than 2022-12-29 | Gioia Bertin; Lorenzo Marcato | 32h | 1,056 |
| 15 | 1.3 | **REALIZZAZIONE** | 69.25d | 2023-02-01 | 2023-05-09 |  | 0d |  |  |  | 418h | 10,428 |
| 16 | 1.3.1 | Documenti di sviluppo prodotto | 2d | 2023-02-01 | 2023-02-02 | 13, 14 | 51.25d | 0d | start no earlier than 2023-02-01 | Gabriela Badarau; Gioia Bertin; Mirko Cerati | 48h | 1,456 |
| 17 | 1.3.2 | requisiti!! | 2d | 2023-02-03 | 2023-02-06 | 16 | 65.25d |  | start no earlier than 2023-02-01 | Gabriela Badarau; Gioia Bertin | 32h | 1,200 |
| 18 | 1.3.3 | **Sviluppo prodotto** | 23.5d | 2023-04-05 | 2023-05-09 | 8 | 0d |  |  |  | 338h | 7,772 |
| 19 | 1.3.3.1 | **Creazione del sito web** | 7.5d | 2023-04-05 | 2023-04-17 |  | 0d |  |  |  | 154h | 3,892 |
| 20 | 1.3.3.1.1 | **Configurazione del dominio** | 0.5d | 2023-04-05 | 2023-04-06 |  | 0d |  |  |  | 10h | 228 |
| 21 | 1.3.3.1.1.1 | Registrazione | 2h | 2023-04-05 | 2023-04-05 |  | 0d |  | finish no earlier than 2023-04-05 | Mirko Cerati | 2h | 32 |
| 22 | 1.3.3.1.1.2 | Impostazione DNS | 2h | 2023-04-05 | 2023-04-05 |  | 0d |  | finish no earlier than 2023-04-05 | Lorenzo Marcato; Gioia Bertin | 4h | 132 |
| 23 | 1.3.3.1.1.3 | Controllo connession SSL | 2h | 2023-04-06 | 2023-04-06 | 21, 22 | 0d |  | finish no earlier than 2023-04-05 | Lorenzo Marcato; Mirko Cerati | 4h | 64 |
| 24 | 1.3.3.1.2 | **Organizzazione spazio web** | 7d | 2023-04-06 | 2023-04-17 | 20 | 0d |  |  |  | 144h | 3,664 |
| 25 | 1.3.3.1.2.1 | Configurazione tema | 5d | 2023-04-06 | 2023-04-13 | 23, 20 | 0d |  | finish no earlier than 2023-04-05 | Mirko Cerati | 40h | 640 |
| 26 | 1.3.3.1.2.2 | Creazione logo | 2d | 2023-04-06 | 2023-04-10 | 20 | 0d |  | finish no earlier than 2023-04-05 | Lorenzo Marcato | 16h | 256 |

| ID | WBS | Task | Duration | Start | Finish | Predecessors | Total slack | Constraint | Resources | Work | Cost |
| --- | --- | --- | --- | --- | --- | --- | --- | --- | --- | --- | --- |
| 27 | 1.3.3.1.2.3 | **Inserimento dei contenuti** | 5d | 2023-04-10 | 2023-04-17 |  | 0d |  |  | 80h | 2,640 |
| 28 | 1.3.3.1.2.3.1 | Home Page | 3d | 2023-04-10 | 2023-04-13 | 22, 26 | 0d | finish no earlier than 2023-04-05 | Lorenzo Marcato; Gioia Bertin | 48h | 1,584 |
| 29 | 1.3.3.1.2.3.2 | Prodotti | 2d | 2023-04-13 | 2023-04-17 | 28 | 0d | finish no earlier than 2023-04-05 | Gioia Bertin | 16h | 800 |
| 30 | 1.3.3.1.2.3.3 | Info (cookie, privacy etc..) | 2d | 2023-04-13 | 2023-04-17 | 25 | 0d | finish no earlier than 2023-04-05 | Mirko Cerati | 16h | 256 |
| 31 | 1.3.3.1.2.4 | Configurazione metodi di pagamento | 1d | 2023-04-13 | 2023-04-14 | 28 | 1d | finish no earlier than 2023-04-05 | Lorenzo Marcato | 8h | 128 |
| 32 | 1.3.3.2 | **INTEGRAZIONE CON DATABASE** | 11d | 2023-04-17 | 2023-05-02 | 19 | 0d |  |  | 88h | 2,200 |
| 33 | 1.3.3.2.1 | **Progettazione del database** | 6d | 2023-04-17 | 2023-04-25 |  | 0d |  |  | 48h | 1,200 |
| 34 | 1.3.3.2.1.1 | schema concettuale | 4d | 2023-04-17 | 2023-04-21 | 16 | 0d | finish no earlier than 2023-04-05 | Gabriela Badarau | 32h | 800 |
| 35 | 1.3.3.2.1.2 | schema logico | 2d | 2023-04-21 | 2023-04-25 | 34 | 0d | finish no earlier than 2023-04-05 | Gabriela Badarau | 16h | 400 |
| 36 | 1.3.3.2.2 | **creazione e implementazione database** | 5d | 2023-04-25 | 2023-05-02 |  | 0d |  |  | 40h | 1,000 |
| 37 | 1.3.3.2.2.1 | gestione materie prime | 2d | 2023-04-25 | 2023-04-27 | 35 | 0d | finish no earlier than 2023-04-05 | Gabriela Badarau | 16h | 400 |
| 38 | 1.3.3.2.2.2 | gestione prodotti finiti | 2d | 2023-04-27 | 2023-05-01 | 37 | 0d | finish no earlier than 2023-04-05 | Gabriela Badarau | 16h | 400 |
| 39 | 1.3.3.2.2.3 | contatti fornitori | 1d | 2023-05-01 | 2023-05-02 | 38 | 0d | finish no earlier than 2023-04-05 | Gabriela Badarau | 8h | 200 |
| 40 | 1.3.3.3 | **INTEGRAZIONE CASSA** | 5d | 2023-05-02 | 2023-05-09 | 32 | 0d |  |  | 96h | 1,680 |
| 41 | 1.3.3.3.1 | creazione profilo amministratore-cassiere | 1d | 2023-05-02 | 2023-05-03 | 30 | 0d | start no earlier than 2023-02-03 | Mirko Cerati | 8h | 128 |
| 42 | 1.3.3.3.2 | implementazione metodi pagamento | 1d | 2023-05-02 | 2023-05-03 | 31 | 0d | start no earlier than 2023-02-03 | Lorenzo Marcato | 8h | 128 |
| 43 | 1.3.3.3.3 | **INTEGRAZIONE DI ANALISI E STATISTICA** | 2d | 2023-05-02 | 2023-05-04 | 32 | 3d |  |  | 16h | 400 |
| 44 | 1.3.3.3.3.1 | adozione programmi per report periodici | 2d | 2023-05-02 | 2023-05-04 |  | 3d | start no earlier than 2023-02-03 | Gabriela Badarau | 16h | 400 |
| 45 | 1.3.3.3.4 | **RIORGANIZZAZIONE RISORSE UMANE** | 4d | 2023-05-03 | 2023-05-09 |  | 0d |  |  | 64h | 1,024 |
| 46 | 1.3.3.3.4.1 | code separate | 4d | 2023-05-03 | 2023-05-09 | 42 | 0d | start no earlier than 2023-02-03 | Lorenzo Marcato | 32h | 512 |
| 47 | 1.3.3.3.4.2 | consegna in classe | 4d | 2023-05-03 | 2023-05-09 | 41 | 0d | start no earlier than 2023-02-03 | Mirko Cerati | 32h | 512 |
| 48 | 1.4 | **COLLAUDO - CHIUSURA** | 6d | 2023-05-09 | 2023-05-17 | 15 | 0d |  |  | 176h | 4,536 |
| 49 | 1.4.1 | Verbali riunioni | 2d | 2023-05-09 | 2023-05-11 | 44 | 1d | finish no earlier than 2023-04-29 | Gabriela Badarau | 16h | 400 |
| 50 | 1.4.2 | Documenti di revisione | 2d | 2023-05-09 | 2023-05-11 |  | 1d | finish no earlier than 2023-04-29 | Gioia Bertin | 16h | 800 |
| 51 | 1.4.3 | Testing | 3d | 2023-05-09 | 2023-05-12 | 46, 47 | 0d | finish no earlier than 2023-04-29 | Lorenzo Marcato; Mirko Cerati | 48h | 768 |
| 52 | 1.4.4 | Chiusura | 2d | 2023-05-12 | 2023-05-16 | 50, 49, 51 | 0d | finish no earlier than 2023-04-29 | Gabriela Badarau; Gioia Bertin; Lorenzo Marcato; Mirko Cerati | 64h | 1,712 |
| 53 | 1.4.5 | Presentazione e consegna del prodotto finale | 1d | 2023-05-16 | 2023-05-17 | 52 | 0d | finish no earlier than 2023-04-29 | Gabriela Badarau; Gioia Bertin; Lorenzo Marcato; Mirko Cerati | 32h | 856 |
